Schedule from a web Gantt chart, 2026-08-24 to 2026-08-24.
Saturdays and Sundays are off

## Schedule

| ID | WBS | Task | Duration | Start | Finish | Status |
| --- | --- | --- | --- | --- | --- | --- |
| 2 | 1 | **SDV rework** | 1d | 2026-08-24 | 2026-08-24 |  |
| 3 | 1.1 | Plan A: 增加锡重新回流 | 1d | 2026-08-24 | 2026-08-24 |  |
| 4 | 1.2 | Plan B：小锡炉返修 | 1d | 2026-08-24 | 2026-08-24 | failed |
| 5 | 1.3 | Plan C: 波峰焊返修 | 1d | 2026-08-24 | 2026-08-24 |  |
| 6 | 2 | **SDV-SIT DC module焊接验证** | 1d | 2026-08-24 | 2026-08-24 |  |
| 7 | 2.1 | 波峰焊验证 | 1d | 2026-08-24 | 2026-08-24 |  |
| 8 | 2.2 | 回流焊验证 | 1d | 2026-08-24 | 2026-08-24 |  |
